# Harmony Residency

Schedule from Primavera P6, 2025-11-12 to 2026-02-21, data date 2025-11-12, costs in INR.

## Calendars

- VIM Calender 6 x 8: Mon-Sat 09:00-13:00, 14:00-18:00; Sun off. Exceptions (off unless hours are given): 2025-12-25, 2026-01-26, 2026-02-12 09:00-13:00.

## Resources

| Resource | Group | Rate |
| --- | --- | --- |
| Site Engineer P. Kumar | labor | 130.21 |
| Spervisior R.Singh | labor | 93.75 |
| Mason Team | labor | 187.5 |
| Captain | labor | 900 |
| Site Engineer M.Yadav | labor | 104.17 |
| Engineer Ml singh | labor | 1300 |
| Rampal | labor | 1500 |
| Manager K.l | labor | 2000 |
| Officer Shyam | labor | 114.58 |
| Helper Team | labor | 62.5 |
| JCB | equipment | 1200 |
| Operator Sonu | labor | 300 |
| Manager Karan singh | labor | 900 |
| Carpenter Team | labor | 150 |
| Supervisor Rayon | labor | 850 |
| M. Kapil | labor | 62.5 |
| Operator Kishan | labor | 350 |
| Excavator | equipment | 2000 |
| Concrete Mixer | equipment | 700 |
| Vibratory Roller | equipment | 900 |
| Operator Shubham | labor | 250 |
| Operator Sumit | labor | 250 |
| Supervisor S. Sharma | labor | 67.71 |
| Bar Bending Team | labor | 100 |
| Bar bending Machine | equipment | 175 |
| Supervisor A.Das | labor | 78.12 |
| Plate Compactor | equipment | 500 |
| Operator Ankit | labor | 200 |
| Tower crane | equipment | 2750 |
| Operator Kiran | labor | 300 |
| Lahon Prasad | labor | 1200 |
| Electrician Team | labor | 162.5 |
| Supervisor Lal | labor | 800 |
| Plumber Team | labor | 162.5 |
| Supervisor Chauhan | labor | 750 |
| K.M Rahul | labor | 1300 |
| Supervisor K.d | labor | 850 |
| Tile Team | labor | 600 |
| Painter Team | labor | 550 |
| Raju | labor | 1300 |
| Engineer Piyush | labor | 450 |
| Technician Keshav | labor | 200 |
| Officer Shoham | labor | 350 |

## Schedule

| ID | WBS | Activity | Duration | Start | Finish | Predecessors | Total float | Free float | Resources | Cost |
| --- | --- | --- | --- | --- | --- | --- | --- | --- | --- | --- |
|  | 1 | **Pre- construction Phase** |  | 2025-11-12 | 2025-11-27 |  |  |  |  |  |
| A1000 |  | Site Survey & Soil Investigation | 5d | 2025-11-12 | 2025-11-17 |  | 0d |  | Site Engineer P. Kumar [5 h]; Spervisior R.Singh [5 h]; Mason Team [2.5 h]; Captain [5 h] | 6,088.54 |
| A1030 |  | Mobilization(Site office, Barricading, Utilities) | 5d | 2025-11-12 | 2025-11-17 | A1000 SS | 0d |  | Helper Team [5 h]; JCB [5 h]; Operator Sonu [5 h]; Manager Karan singh [5 h] | 12,312.5 |
| A1010 |  | Design & Drawing Approval | 7d | 2025-11-20 | 2025-11-27 | A1000 FS+2d | 71d | 0d | Site Engineer M.Yadav [7 h]; Engineer Ml singh [7 h]; Rampal [7 h]; Manager K.l [7 h] | 34,329.17 |
| A1020 |  | Estimation & BOQ Preparation | 5d | 2025-11-20 | 2025-11-25 | A1010 SS | 73d |  | Officer Shyam [5 h]; Engineer Ml singh [5 h] | 7,072.92 |
|  | 2 | **Construction Phase** |  | 2025-11-12 | 2026-02-21 |  |  |  |  |  |
|  | 1 | **Site Preparation** |  | 2025-11-12 | 2025-11-22 |  |  |  |  |  |
| A1050 |  | Temporary Works (Barricades, Access Roads) | 8d | 2025-11-12 | 2025-11-20 | A1030 SS | 77d | 0d | Carpenter Team [8 h]; Supervisor Rayon [4 h]; Helper Team [8 h] | 5,100 |
| A1060 |  | Material Handling & Storage Setup | 4d | 2025-11-15 | 2025-11-19 | A1050 SS+3d | 78d |  | Helper Team [4 h]; M. Kapil [1.2 h] | 325 |
| A1040 |  | Site Clearing & Leveling | 5d | 2025-11-18 | 2025-11-22 | A1030 | 0d |  | Helper Team [5 h]; JCB [5 h]; Operator Sonu [5 h]; Site Engineer M.Yadav [1.5 h] | 7,968.75 |
|  | 2 | **Substructure** |  | 2025-11-24 | 2025-12-17 |  |  |  |  |  |
| A1070 |  | Excavation | 4d | 2025-11-24 | 2025-11-27 | A1040 | 0d |  | Operator Kishan [4 h]; Excavator [32 h]; Helper Team [4 h]; Site Engineer M.Yadav [1.2 h] | 65,775 |
| A1080 |  | PCC | 2d | 2025-11-28 | 2025-11-29 | A1070 | 0d |  | Mason Team [2 h]; Concrete Mixer [2 h]; Vibratory Roller [2 h]; Operator Shubham [2 h]; Operator Sumit [2 h]; Supervisor S. Sharma [1 h] | 4,642.71 |
| A1090 |  | Footing Reinforcement & Concreting | 4d | 2025-12-01 | 2025-12-04 | A1080 | 0d |  | Bar Bending Team [4 h]; Bar bending Machine [4 h]; Concrete Mixer [4 h]; Operator Shubham [4 h]; Supervisor A.Das [2 h]; Supervisor S. Sharma [2 h] | 5,191.67 |
| A1100 |  | Curing | 7d | 2025-12-01 | 2025-12-08 | A1090 SS | 0d |  | Helper Team [3.5 h]; Site Engineer P. Kumar [1.4 h] | 401.04 |
| A1110 |  | Plinth Beam | 4d | 2025-12-08 | 2025-12-11 | A1100 SS+6d | 0d |  | Bar Bending Team [4 h]; Carpenter Team [4 h]; Concrete Mixer [4 h]; Operator Shubham [4 h]; Supervisor S. Sharma [2 h] | 4,935.42 |
| A1120 |  | Backfilling & Compaction | 3d | 2025-12-12 | 2025-12-15 | A1110 | 0d |  | Plate Compactor [3 h]; Helper Team [3 h]; Operator Ankit [3 h] | 2,287.5 |
| A1130 |  | DPC | 2d | 2025-12-16 | 2025-12-17 | A1120 | 0d |  | Rampal [0.4 h]; Mason Team [2 h] | 975 |
|  | 3 | **Superstructure** |  | 2025-12-18 | 2026-01-28 |  |  |  |  |  |
| A1140 |  | Column & Beam Reinforcement | 5d | 2025-12-18 | 2025-12-23 | A1130 | 0d |  | Bar Bending Team [5 h]; Bar bending Machine [5 h]; Supervisor A.Das [2.5 h] | 1,570.31 |
| A1150 |  | Shuttering & Concreting | 5d | 2025-12-24 | 2025-12-30 | A1140 | 0d |  | Carpenter Team [5 h]; Concrete Mixer [40 h]; Tower crane [5 h]; Operator Shubham [5 h]; Operator Kiran [5 h]; Supervisor S. Sharma [2.5 h] | 45,419.27 |
| A1160 |  | Slab casting | 4d | 2025-12-31 | 2026-01-03 | A1150 | 0d |  | Mason Team [4 h]; Concrete Mixer [4 h]; Vibratory Roller [4 h]; Operator Sumit [4 h]; Operator Shubham [4 h]; Rampal [1.2 h] | 10,950 |
| A1170 |  | Masonary (Walls) | 5d | 2026-01-08 | 2026-01-13 | A1160 SS+7d | 0d |  | Mason Team [5 h]; Spervisior R.Singh [2.5 h] | 1,171.88 |
| A1180 |  | Lintels & Sunshade | 3d | 2026-01-14 | 2026-01-16 | A1170 | 9d | 0d | Carpenter Team [1.5 h]; Mason Team [3 h] | 787.5 |
| A1190 |  | Door & Window Frames | 3d | 2026-01-24 | 2026-01-28 | A1170 SS+14d | 20d |  | Carpenter Team [3 h]; Lahon Prasad [0.9 h] | 1,530 |

| ID | WBS | Activity | Type | Duration | Start | Finish | Predecessors | Planned start | Planned finish | Total float | Free float | Resources | Cost |
| --- | --- | --- | --- | --- | --- | --- | --- | --- | --- | --- | --- | --- | --- |
|  | 4 | **MEP Works** |  |  | 2026-01-08 | 2026-01-14 |  |  |  |  |  |  |  |
| A1200 |  | Electrical Wiring & Fixtures |  | 6d | 2026-01-08 | 2026-01-14 | A1170 SS, A1160 SS+3d |  |  | 5d |  | Electrician Team [6 h]; Supervisor Lal [3 h] | 3,375 |
| A1210 |  | Plumbing Works |  | 5d | 2026-01-08 | 2026-01-13 | A1160 SS+3d, A1170 SS |  |  | 24d |  | Plumber Team [5 h]; Supervisor Chauhan [2.5 h] | 2,687.5 |
| A1220 |  | Firefighting Installations |  | 4d | 2026-01-08 | 2026-01-12 | A1160 SS+5d, A1170 SS |  |  | 33d |  | Plumber Team [4 h]; K.M Rahul [2 h]; Helper Team [2 h] | 3,375 |
|  | 5 | **Finishing Works** |  |  | 2026-01-17 | 2026-02-13 |  |  |  |  |  |  |  |
|  | 1 | **Internal Finishes** |  |  | 2026-01-20 | 2026-02-13 |  |  |  |  |  |  |  |
| A1230 |  | Plaster |  | 5d | 2026-01-20 | 2026-01-24 | A1170 SS+10d, A1200 FF |  |  | 0d |  | Mason Team [5 h]; Supervisor K.d [2.5 h] | 3,062.5 |
| A1240 |  | Flooring & Tiling |  | 5d | 2026-01-30 | 2026-02-04 | A1230 FS+3d, A1200 FF+12d |  |  | 0d |  | Carpenter Team [5 h]; Tile Team [5 h]; Lahon Prasad [1.5 h] | 5,550 |
| A1250 |  | Painting |  | 4d | 2026-02-09 | 2026-02-13 | A1230 FF, A1240 FS+3d |  |  | 0d |  | Painter Team [4 h]; Supervisor K.d [1.2 h] | 3,220 |
| A1260 |  | Electrical Fixtures |  | 3d | 2026-02-09 | 2026-02-11 | A1200 FF, A1250 SS |  |  | 0d |  | Raju [3 h] | 3,900 |
| A1270 |  | Plumbing Fixtures |  | 3d | 2026-02-09 | 2026-02-11 | A1210 FF, A1250 SS |  |  | 0d |  | K.M Rahul [3 h] | 3,900 |
|  | 2 | **External Finishes** |  |  | 2026-01-17 | 2026-01-28 |  |  |  |  |  |  |  |
| A1280 |  | External Plaster & Paint |  | 5d | 2026-01-17 | 2026-01-22 | A1170, A1180 |  |  | 9d | 0d | Mason Team [5 h]; Helper Team [5 h]; Operator Shubham [5 h]; Concrete Mixer [5 h]; Plate Compactor [5 h]; Operator Ankit [5 h]; M. Kapil [1 h]; Supervisor K.d [2.5 h] | 11,687.5 |
| A1290 |  | Compound Wall |  | 4d | 2026-01-23 | 2026-01-28 | A1280 |  |  | 20d |  | Mason Team [4 h]; Helper Team [4 h]; Concrete Mixer [4 h]; Operator Shubham [4 h]; Spervisior R.Singh [2 h]; Site Engineer P. Kumar [1.2 h] | 5,143.75 |
| A1300 |  | Landscaping & Paving |  | 4d | 2026-01-23 | 2026-01-28 | A1280 |  |  | 9d |  | Site Engineer P. Kumar [1.2 h]; Helper Team [4 h]; Lahon Prasad [2 h]; Plate Compactor [4 h]; Operator Ankit [4 h] | 5,606.25 |
|  | 6 | **Safety & Quality Control** |  |  | 2025-11-12 | 2026-02-21 |  |  |  |  |  |  |  |
| A1310 |  | PPE & Toolbox Talks | level of effort | 85d | 2025-11-12 | 2026-02-21 | A1030 SS |  |  | 0d |  | M. Kapil [85 h] | 5,312.5 |
| A1320 |  | Site Inspections | level of effort | 80d | 2025-11-18 | 2026-02-21 | A1040 SS |  |  | 0d |  | Rampal [40 h]; Engineer Piyush [40 h] | 78,000 |
| A1330 |  | Material Testing & Quality Reports | level of effort | 61d | 2025-12-01 | 2026-02-11 | A1080 |  |  | 0d |  | Technician Keshav [61 h]; Rampal [30.5 h] | 57,950 |
|  | 3 | **Testing & Handover Phase** |  |  | 2026-02-09 | 2026-02-21 |  |  |  |  |  |  |  |
| A1340 |  | Final Testing & Commissioning |  | 3d | 2026-02-09 | 2026-02-11 | A1330 FF, A1300, A1260 FF, A1270 FF |  |  | 0d |  | Raju [1.5 h]; K.M Rahul [1.5 h] | 3,900 |
| A1350 |  | Snag List Rectification |  | 3d | 2026-02-12 | 2026-02-16 | A1340 |  |  | 0d |  | Supervisor K.d [1.5 h]; Mason Team [1.5 h] | 1,556.25 |
| A1360 |  | Handover Documentation |  | 5d | 2026-02-16 | 2026-02-21 | A1350, A1320 FF, A1340 SS |  |  | 0d |  | Officer Shoham [5 h] | 1,750 |
| A1370 |  | Client Approval & Site Demobilization | resource dependent | 5d | 2026-02-21 | 2026-02-21 | A1360, A1310 FF, A1350 FF | 2026-02-21 | 2026-02-27 | 0d |  | Manager K.l [2.5 h]; Manager Karan singh [2.5 h] | 7,250 |
